# 项目1.0.1

How a schedule from MS Project changed from version to version. A marks actual dates.

## Version 1 (saved 2015-04-04, file 项目进度计划1.2.1.mpp)

Note of the change: 更新 项目进度计划

| ID | WBS | Task | Duration | Start | Finish | Predecessors | Constraint |
| --- | --- | --- | --- | --- | --- | --- | --- |
| 1 |  | 项目确定及介绍 | 4d | 2015-03-19 A | 2015-03-24 |  |  |
| 2 |  | 计划书 | 3d | 2015-03-25 | 2015-03-27 | 1 |  |
| 3 | 3 | **软件需求分析** | 6d | 2015-03-30 | 2015-04-05 | 2, 1 |  |
| 4 |  | 更新任务计划书 | 1h | 2015-04-03 | 2015-04-03 |  | start no earlier than 2015-04-03 |
| 5 |  | 开会讨论需求 | 2h | 2015-04-04 | 2015-04-04 |  |  |
| 6 |  | 制作RUCM | 16h | 2015-04-04 | 2015-04-05 |  |  |
| 7 |  | 制作检查单 | 1d | 2015-04-05 | 2015-04-05 |  |  |
| 8 |  | 软件需求评审 | 2d | 2015-04-06 | 2015-04-07 | 3 |  |
| 9 |  | 软件需求复评审 | 2d | 2015-04-07 | 2015-04-08 | 8 |  |
| 10 |  | 软件功能分析 | 9d | 2015-04-09 | 2015-04-21 | 9 |  |
| 11 |  | 软件测试 | 2d | 2015-04-22 | 2015-04-23 | 10 |  |
| 12 |  | 软件测试评审 | 3d | 2015-04-24 | 2015-04-28 | 11 |  |
| 13 |  | 软件测试复评审 | 5d | 2015-04-29 | 2015-05-05 | 12 |  |
| 14 |  | 软件产品更新与展示 | 4d | 2015-05-07 | 2015-05-12 | 1, 2, 3, 8 |  |
| 15 |  | 演示 | 5d | 2015-05-13 | 2015-05-19 | 13 |  |
| 16 |  | 综合实验分析 | 4d | 2015-05-21 | 2015-05-26 | 15 |  |
| 17 |  | 综合实验总结 | 4d | 2015-05-28 | 2015-06-02 | 16 |  |
| 18 |  | 软件进度计划与控制 | 75d | 2015-03-19 | 2015-07-01 |  |  |
| 19 |  | 工作量估计与统计分析 | 75d | 2015-03-19 | 2015-07-01 |  |  |
| 20 |  | 配置管理 | 75d | 2015-03-19 | 2015-07-01 |  |  |

## Version 2 (saved 2015-04-12, file 项目进度计划1.2.1.mpp)

Note of the change: 第六周：更新任务计划书

Last finish stays 2015-07-01.

Added:

| ID | Task | Duration | Start | Finish | Predecessors | Resources |
| --- | --- | --- | --- | --- | --- | --- |
| 2 | 开会讨论 | 1h | 2015-03-19 08:00 | 2015-03-19 09:00 |  | 李涵; 王斐; 张晋卿; 张振 |
| 3 | 调研linux文件系统 | 16h | 2015-03-19 09:00 | 2015-03-23 09:00 | 2 | 李涵 |
| 4 | 调研高性能计算开源软件 | 16h | 2015-03-19 09:00 | 2015-03-23 09:00 | 2 | 张振 |
| 5 | 调研数据处理开源软件 | 16h | 2015-03-19 09:00 | 2015-03-23 09:00 | 2 | 张晋卿 |
| 6 | 调研CompCert编译器 | 16h | 2015-03-19 09:00 | 2015-03-23 09:00 | 2 | 王斐 |
| 7 | 开会确定项目 | 1h | 2015-03-23 09:00 | 2015-03-23 10:00 | 3, 4, 5, 6 | 李涵; 王斐; 张晋卿; 张振 |
| 8 | 材料准备 | 3h | 2015-03-23 10:00 | 2015-03-23 14:00 | 7 | 李涵; 王斐; 张晋卿; 张振 |
| 9 | 制作PPT，准备课题介绍 | 2h | 2015-03-24 08:00 | 2015-03-24 10:00 | 8 | 王斐; 张晋卿 |
| 11 | 上课 | 3h | 2015-03-25 08:00 | 2015-03-25 11:00 |  | 李涵; 王斐; 张晋卿; 张振 |
| 12 | 开会总结问题并且讨论计划书编写 | 2h | 2015-03-25 11:00 | 2015-03-25 14:00 | 11 | 李涵; 王斐; 张晋卿; 张振 |
| 13 | 编写Project | 2h | 2015-03-25 14:00 | 2015-03-25 16:00 | 12 | 王斐; 张晋卿 |
| 14 | 阅读用户手册 | 8h | 2015-03-25 16:00 | 2015-03-26 16:00 | 13 | 张晋卿 |
| 15 | 安装CompCert C编译器软件 | 8h | 2015-03-25 16:00 | 2015-03-26 16:00 | 13 | 李涵; 张振 |
| 16 | 阅读并整理CompCert C源代码 | 8h | 2015-03-25 16:00 | 2015-03-26 16:00 | 13 | 王斐 |
| 17 | 编写CompCert C开发计划书 | 2h | 2015-03-26 16:00 | 2015-03-27 09:00 | 14, 15, 16 | 李涵; 王斐; 张晋卿; 张振 |
| 22 | 编写软件需求规格说明书 | 8h | 2015-03-31 08:00 | 2015-03-31 17:00 | 20 | 李涵; 张晋卿 |
| 23 | 上课 | 3h | 2015-04-01 08:00 | 2015-04-01 11:00 |  | 王斐; 李涵; 张晋卿; 张振 |
| 24 | 开会分析出现的问题 | 2h | 2015-04-02 08:00 | 2015-04-02 10:00 | 23 | 李涵; 王斐; 张晋卿; 张振 |
| 25 | 更改RUCM | 8h | 2015-04-03 08:00 | 2015-04-03 17:00 | 24 | 李涵; 王斐; 张晋卿; 张振 |
| 28 | 对各组进行评审 | 2h | 2015-04-06 08:00 | 2015-04-06 10:00 |  | 李涵; 王斐; 张晋卿; 张振 |
| 29 | 收集本小组出现的问题 | 2h | 2015-04-07 08:00 | 2015-04-07 10:00 |  | 张晋卿; 张振 |
| 31 | 上课 | 3h | 2015-04-08 08:00 | 2015-04-08 11:00 |  | 李涵; 王斐; 张振; 张晋卿 |
| 32 | 整理课堂问题 | 2h | 2015-04-09 08:00 | 2015-04-09 10:00 | 31 | 张晋卿 |
| 33 | 修改RUCM | 3h | 2015-04-10 08:00 | 2015-04-10 11:00 | 32 | 李涵; 王斐 |
| 34 | 修改软件需求规格说明书 | 3h | 2015-04-10 08:00 | 2015-04-10 11:00 | 32 | 张晋卿; 张振 |
| 35 | 进行软件项目的评审 | 13h | 2015-04-10 11:00 | 2015-04-13 17:00 | 33, 34 | 李涵; 王斐; 张晋卿; 张振 |
| 36 | 进行项目总结 | 4h | 2015-04-14 08:00 | 2015-04-14 12:00 | 35 | 李涵; 王斐; 张晋卿; 张振 |
| 37 | 上课进行项目需求的介绍 | 3h | 2015-04-15 08:00 | 2015-04-15 11:00 |  | 李涵; 王斐; 张晋卿; 张振 |
| 39 | 开会讨论测试任务 | 2h | 2015-04-15 11:00 | 2015-04-15 14:00 | 37 | 李涵; 王斐; 张晋卿; 张振 |
| 40 | 设计测试用例 | 8h | 2015-04-15 14:00 | 2015-04-16 14:00 | 39 | 王斐; 张振 |
| 41 | 编写测试文档 | 8h | 2015-04-16 14:00 | 2015-04-17 14:00 | 40 | 李涵; 张晋卿 |
| 43 | 上课 | 3h | 2015-04-29 08:00 | 2015-04-29 11:00 |  | 李涵; 王斐; 张晋卿; 张振 |
| 44 | 进行软件测试评审 | 8h | 2015-04-30 08:00 | 2015-04-30 17:00 |  | 李涵; 王斐; 张晋卿; 张振 |
| 45 | 制作评审报告 | 1d | 2015-05-05 08:00 | 2015-05-05 17:00 |  | 张晋卿; 王斐 |
| 47 | 上课 | 1d | 2015-05-06 08:00 | 2015-05-06 17:00 |  | 李涵; 张晋卿; 王斐; 张振 |
| 49 | 上课 | 1d | 2015-05-13 08:00 | 2015-05-13 17:00 |  | 李涵; 王斐; 张晋卿; 张振 |

Removed: 10 软件功能分析

Changed:

| ID | Task | Start | Finish | Duration | Predecessors | Other |
| --- | --- | --- | --- | --- | --- | --- |
| 1 | **项目确定及介绍** | 2015-03-19 A → 2015-03-19 08:00 | 2015-03-24 → 2015-03-24 17:00 | 4d → 32h |  |  |
| 10 | **CompCert C编译器开发计划书编写** | 2015-03-25 → 2015-03-25 08:00 | 2015-03-27 → 2015-03-27 17:00 | 3d → 24h |  | was named 计划书 |
| 18 | **软件需求分析** | 2015-03-30 → 2015-03-29 08:00 (-1d) | 2015-04-05 → 2015-04-05 17:00 | 6d → 56h |  |  |
| 19 | 更新任务计划书 | 2015-04-03 → 2015-03-30 08:00 (-4d) | 2015-04-03 → 2015-03-30 10:00 (-4d) | 1h → 2h |  | constraint start no earlier than 2015-04-03 → start no earlier than 2015-03-30 08:00; resources 王斐 [50%]; 张晋卿 [50%] → 王斐; 张晋卿 |
| 20 | 开会讨论需求 | 2015-04-04 → 2015-03-30 10:00 (-5d) | 2015-04-04 → 2015-03-30 12:00 (-5d) |  | none → 19 | resources 王斐 [25%]; 张晋卿 [25%]; 李涵 [25%]; 张振 [25%] → 王斐; 张晋卿; 李涵; 张振 |
| 21 | 制作RUCM | 2015-04-04 → 2015-03-31 08:00 (-4d) | 2015-04-05 → 2015-03-31 17:00 (-5d) | 16h → 8h | none → 20 | resources 王斐 [25%]; 李涵 [25%]; 张晋卿 [25%]; 张振 [25%] → 王斐; 张振 |
| 26 | 制作检查单 | 2015-04-05 → 2015-04-05 17:00 | 2015-04-05 → 2015-04-05 17:00 | 1d → 0h |  | resources 张晋卿 [25%]; 王斐 [25%]; 张振 [25%]; 李涵 [25%] → 张晋卿; 张振 |
| 27 | **软件需求评审** | 2015-04-06 → 2015-04-06 08:00 | 2015-04-07 → 2015-04-07 17:00 | 2d → 16h |  |  |
| 30 | **软件需求复评审** | 2015-04-07 → 2015-04-08 08:00 (+1d) | 2015-04-08 → 2015-04-14 17:00 (+6d) | 2d → 5d |  |  |
| 38 | **软件测试** | 2015-04-22 → 2015-04-23 08:00 (+1d) | 2015-04-23 → 2015-04-28 17:00 (+5d) | 2d → 4d | 软件功能分析 → none |  |
| 42 | **软件测试评审** | 2015-04-24 → 2015-04-29 08:00 (+5d) | 2015-04-28 → 2015-05-05 17:00 (+7d) | 3d → 5d |  |  |
| 46 | **软件测试复评审** | 2015-04-29 → 2015-05-06 08:00 (+7d) | 2015-05-05 → 2015-05-12 17:00 (+7d) |  |  |  |
| 48 | **软件产品更新与展示** | 2015-05-07 → 2015-05-13 08:00 (+6d) | 2015-05-12 → 2015-05-19 17:00 (+7d) | 4d → 5d |  |  |
| 50 | 演示 | 2015-05-13 → 2015-05-20 08:00 (+7d) | 2015-05-19 → 2015-05-26 17:00 (+7d) |  |  |  |
| 51 | 综合实验分析 | 2015-05-21 → 2015-05-27 08:00 (+6d) | 2015-05-26 → 2015-06-02 17:00 (+7d) | 4d → 5d |  |  |
| 52 | 综合实验总结 | 2015-05-28 → 2015-06-03 08:00 (+6d) | 2015-06-02 → 2015-06-09 17:00 (+7d) | 4d → 5d |  |  |
| 53 | 软件进度计划与控制 | 2015-03-19 → 2015-03-19 08:00 | 2015-07-01 → 2015-07-01 17:00 |  |  |  |
| 54 | 工作量估计与统计分析 | 2015-03-19 → 2015-03-19 08:00 | 2015-07-01 → 2015-07-01 17:00 |  |  |  |
| 55 | 配置管理 | 2015-03-19 → 2015-03-19 08:00 | 2015-07-01 → 2015-07-01 17:00 |  |  |  |

## Version 3 (saved 2015-04-20, file 项目进度计划1.2.1.mpp)

Note of the change: 6-需求规格说明修改

Last finish 2015-07-01 → 2015-07-07 (+6d). Complete tasks 0 → 38.

Added:

| ID | Task | Duration | Start | Finish | Predecessors | Resources |
| --- | --- | --- | --- | --- | --- | --- |
| 37 | **进度计划实验** | 2.37d | 2015-04-15 08:00 | 2015-04-22 23:30 |  |  |
| 38 | 开会讨论 | 2h | 2015-04-16 00:00 A | 2015-04-16 02:00 A |  | 李涵; 王斐; 张晋卿; 张振 |
| 39 | 制定本周计划 | 1h | 2015-04-16 00:00 A | 2015-04-16 01:00 A | 38 | 王斐; 张晋卿 |
| 40 | 整理问题清单 | 2h | 2015-04-17 00:00 A | 2015-04-17 02:00 A | 38 | 王斐; 张晋卿 |
| 41 | 修改需求规格说明书与RUCM | 4h | 2015-04-18 00:00 A | 2015-04-18 04:00 A | 38 | 张振; 李涵 |
| 42 | 统计以往时间，修改进度计划 | 2h | 2015-04-18 00:00 A | 2015-04-18 02:00 A |  | 王斐; 张晋卿 |
| 43 | 增加数据字典 | 1h | 2015-04-20 00:00 A | 2015-04-20 01:00 A |  | 李涵; 张振 |
| 44 | 完成项目进度评审 | 1h | 2015-04-21 00:00 A | 2015-04-21 01:00 A |  | 李涵; 王斐; 张晋卿; 张振 |

Removed: 37 上课进行项目需求的介绍

Changed:

| ID | Task | Start | Finish | Duration | Complete | Predecessors | Other |
| --- | --- | --- | --- | --- | --- | --- | --- |
| 1 | **项目确定及介绍** |  |  |  | 0% → 100% |  | baseline start none → 2015-03-19 08:00; baseline finish none → 2015-03-24 17:00 |
| 2 | 开会讨论 | 2015-03-19 08:00 → 2015-03-19 00:00 A | 2015-03-19 09:00 → 2015-03-19 01:00 A |  | 0% → 100% |  | baseline start none → 2015-03-19 08:00; baseline finish none → 2015-03-19 09:00 |
| 3 | 调研linux文件系统 | 2015-03-19 09:00 → 2015-03-19 00:00 A | 2015-03-23 09:00 → 2015-03-20 23:30 A (-3d) | 16h → 30.5h | 0% → 100% |  | baseline start none → 2015-03-19 09:00; baseline finish none → 2015-03-23 09:00 |
| 4 | 调研高性能计算开源软件 | 2015-03-19 09:00 → 2015-03-19 00:00 A | 2015-03-23 09:00 → 2015-03-20 23:30 A (-3d) | 16h → 30.5h | 0% → 100% |  | baseline start none → 2015-03-19 09:00; baseline finish none → 2015-03-23 09:00 |
| 5 | 调研数据处理开源软件 | 2015-03-19 09:00 → 2015-03-19 00:00 A | 2015-03-23 09:00 → 2015-03-20 23:30 A (-3d) | 16h → 30.5h | 0% → 100% |  | baseline start none → 2015-03-19 09:00; baseline finish none → 2015-03-23 09:00 |
| 6 | 调研CompCert编译器 | 2015-03-19 09:00 → 2015-03-19 00:00 A | 2015-03-23 09:00 → 2015-03-20 23:30 A (-3d) | 16h → 30.5h | 0% → 100% |  | baseline start none → 2015-03-19 09:00; baseline finish none → 2015-03-23 09:00 |
| 7 | 开会确定项目 | 2015-03-23 09:00 → 2015-03-21 00:00 A (-2d) | 2015-03-23 10:00 → 2015-03-21 17:00 A (-2d) | 1h → 16h | 0% → 100% |  | baseline start none → 2015-03-23 09:00; baseline finish none → 2015-03-23 10:00 |
| 8 | 材料准备 | 2015-03-23 10:00 → 2015-03-23 00:00 A | 2015-03-23 14:00 → 2015-03-23 04:00 A | 3h → 4h | 0% → 100% |  | baseline start none → 2015-03-23 10:00; baseline finish none → 2015-03-23 14:00 |
| 9 | 制作PPT，准备课题介绍 | 2015-03-24 08:00 → 2015-03-24 00:00 A | 2015-03-24 10:00 → 2015-03-24 00:30 A | 2h → 0.5h | 0% → 100% |  | baseline start none → 2015-03-24 08:00; baseline finish none → 2015-03-24 10:00 |
| 10 | **CompCert C编译器开发计划书编写** |  |  |  | 0% → 100% |  | baseline start none → 2015-03-25 08:00; baseline finish none → 2015-03-27 17:00 |
| 11 | 上课 | 2015-03-25 08:00 → 2015-03-23 23:30 A (-2d) | 2015-03-25 11:00 → 2015-03-24 10:30 A (-1d) |  | 0% → 100% |  | baseline start none → 2015-03-25 08:00; baseline finish none → 2015-03-25 11:00 |
| 12 | 开会总结问题并且讨论计划书编写 | 2015-03-25 11:00 → 2015-03-25 00:00 A | 2015-03-25 14:00 → 2015-03-25 04:00 A | 2h → 4h | 0% → 100% |  | baseline start none → 2015-03-25 11:00; baseline finish none → 2015-03-25 14:00 |
| 13 | 编写Project | 2015-03-25 14:00 → 2015-03-25 00:00 A | 2015-03-25 16:00 → 2015-03-25 04:00 A | 2h → 4h | 0% → 100% |  | baseline start none → 2015-03-25 14:00; baseline finish none → 2015-03-25 16:00 |
| 14 | 阅读用户手册 | 2015-03-25 16:00 → 2015-03-25 00:00 A | 2015-03-26 16:00 → 2015-03-25 08:00 A (-1d) |  | 0% → 100% |  | baseline start none → 2015-03-25 16:00; baseline finish none → 2015-03-26 16:00 |
| 15 | 安装CompCert C编译器软件 | 2015-03-25 16:00 → 2015-03-26 00:00 A (+1d) | 2015-03-26 16:00 → 2015-03-26 04:00 A | 8h → 4h | 0% → 100% |  | baseline start none → 2015-03-25 16:00; baseline finish none → 2015-03-26 16:00 |
| 16 | 阅读并整理CompCert C源代码 | 2015-03-25 16:00 → 2015-03-27 00:00 A (+2d) | 2015-03-26 16:00 → 2015-03-27 08:00 A (+1d) |  | 0% → 100% |  | baseline start none → 2015-03-25 16:00; baseline finish none → 2015-03-26 16:00 |
| 17 | 编写CompCert C开发计划书 | 2015-03-26 16:00 → 2015-03-28 00:00 A (+2d) | 2015-03-27 09:00 → 2015-03-28 04:00 A (+1d) | 2h → 4h | 0% → 100% |  | baseline start none → 2015-03-26 16:00; baseline finish none → 2015-03-27 09:00 |
| 18 | **软件需求分析** |  |  |  | 0% → 100% |  | baseline start none → 2015-03-29 08:00; baseline finish none → 2015-04-05 17:00 |
| 19 | 更新任务计划书 | 2015-03-30 08:00 → 2015-03-30 00:00 A | 2015-03-30 10:00 → 2015-03-30 06:00 A | 2h → 6h | 0% → 100% |  | baseline start none → 2015-03-30 08:00; baseline finish none → 2015-03-30 10:00 |
| 20 | 开会讨论需求 | 2015-03-30 10:00 → 2015-03-31 00:00 A (+1d) | 2015-03-30 12:00 → 2015-03-31 06:00 A (+1d) | 2h → 6h | 0% → 100% |  | baseline start none → 2015-03-30 10:00; baseline finish none → 2015-03-30 12:00 |
| 21 | 制作RUCM | 2015-03-31 08:00 → 2015-03-31 00:00 A | 2015-03-31 17:00 → 2015-03-31 06:00 A | 8h → 6h | 0% → 100% |  | baseline start none → 2015-03-31 08:00; baseline finish none → 2015-03-31 17:00 |
| 22 | 编写软件需求规格说明书 | 2015-03-31 08:00 → 2015-04-01 00:00 A (+1d) | 2015-03-31 17:00 → 2015-04-01 10:00 A (+1d) | 8h → 10h | 0% → 100% |  | baseline start none → 2015-03-31 08:00; baseline finish none → 2015-03-31 17:00 |
| 23 | 上课 | 2015-04-01 08:00 → 2015-04-01 00:00 A | 2015-04-01 11:00 → 2015-04-01 03:00 A |  | 0% → 100% |  | baseline start none → 2015-04-01 08:00; baseline finish none → 2015-04-01 11:00 |
| 24 | 开会分析出现的问题 | 2015-04-02 08:00 → 2015-04-02 00:00 A | 2015-04-02 10:00 → 2015-04-02 02:00 A |  | 0% → 100% |  | baseline start none → 2015-04-02 08:00; baseline finish none → 2015-04-02 10:00 |
| 25 | 更改RUCM | 2015-04-03 08:00 → 2015-04-03 00:00 A | 2015-04-03 17:00 → 2015-04-03 08:00 A |  | 0% → 100% |  | baseline start none → 2015-04-03 08:00; baseline finish none → 2015-04-03 17:00 |
| 26 | 制作检查单 | 2015-04-05 17:00 → 2015-04-04 00:00 A (-1d) | 2015-04-05 17:00 → 2015-04-04 04:00 A (-1d) | 0h → 4h | 0% → 100% |  | baseline start none → 2015-04-05 17:00; baseline finish none → 2015-04-05 17:00 |
| 27 | **软件需求评审** |  |  |  | 0% → 100% |  | baseline start none → 2015-04-06 08:00; baseline finish none → 2015-04-07 17:00 |
| 28 | 对各组进行评审 | 2015-04-06 08:00 → 2015-04-06 00:00 A | 2015-04-06 10:00 → 2015-04-06 02:00 A |  | 0% → 100% |  | baseline start none → 2015-04-06 08:00; baseline finish none → 2015-04-06 10:00 |
| 29 | 收集本小组出现的问题 | 2015-04-07 08:00 → 2015-04-07 00:00 A | 2015-04-07 10:00 → 2015-04-07 01:00 A | 2h → 1h | 0% → 100% |  | baseline start none → 2015-04-07 08:00; baseline finish none → 2015-04-07 10:00 |
| 30 | **软件需求复评审** |  |  | 5d → 1.74d | 0% → 100% |  | baseline start none → 2015-04-08 08:00; baseline finish none → 2015-04-14 17:00 |
| 31 | 上课 | 2015-04-08 08:00 → 2015-04-08 00:00 A | 2015-04-08 11:00 → 2015-04-08 03:00 A |  | 0% → 100% |  | baseline start none → 2015-04-08 08:00; baseline finish none → 2015-04-08 11:00 |
| 32 | 整理课堂问题 | 2015-04-09 08:00 → 2015-04-09 00:00 A | 2015-04-09 10:00 → 2015-04-09 02:00 A |  | 0% → 100% |  | baseline start none → 2015-04-09 08:00; baseline finish none → 2015-04-09 10:00 |
| 33 | 修改RUCM | 2015-04-10 08:00 → 2015-04-11 00:00 A (+1d) | 2015-04-10 11:00 → 2015-04-11 03:00 A (+1d) |  | 0% → 100% |  | baseline start none → 2015-04-10 08:00; baseline finish none → 2015-04-10 11:00 |
| 34 | 修改软件需求规格说明书 | 2015-04-10 08:00 → 2015-04-11 00:00 A (+1d) | 2015-04-10 11:00 → 2015-04-11 02:00 A (+1d) | 3h → 2h | 0% → 100% |  | baseline start none → 2015-04-10 08:00; baseline finish none → 2015-04-10 11:00 |
| 35 | 进行软件项目的评审 | 2015-04-10 11:00 → 2015-04-11 00:00 A (+1d) | 2015-04-13 17:00 → 2015-04-11 12:00 A (-2d) | 13h → 12h | 0% → 100% |  | baseline start none → 2015-04-10 11:00; baseline finish none → 2015-04-13 17:00 |
| 36 | 进行项目总结 | 2015-04-14 08:00 → 2015-04-14 00:00 A | 2015-04-14 12:00 → 2015-04-14 04:00 A |  | 0% → 100% |  | baseline start none → 2015-04-14 08:00; baseline finish none → 2015-04-14 12:00 |
| 45 | **软件测试** |  | 2015-04-28 17:00 → 2015-05-18 10:00 (+20d) | 4d → 6d |  |  | baseline start none → 2015-04-23 08:00; baseline finish none → 2015-05-18 10:00 |
| 46 | 开会讨论测试任务 | 2015-04-15 11:00 → 2015-04-23 08:00 (+8d) | 2015-04-15 14:00 → 2015-04-23 10:00 (+8d) |  |  | 上课进行项目需求的介绍 → none | baseline start none → 2015-04-23 08:00; baseline finish none → 2015-04-23 10:00 |
| 47 | 设计测试用例 | 2015-04-15 14:00 → 2015-04-24 08:00 (+9d) | 2015-04-16 14:00 → 2015-04-24 17:00 (+8d) |  |  |  | baseline start none → 2015-04-24 08:00; baseline finish none → 2015-04-24 17:00 |
| 48 | 编写测试文档 | 2015-04-16 14:00 → 2015-04-27 08:00 (+11d) | 2015-04-17 14:00 → 2015-04-27 17:00 (+10d) |  |  |  | baseline start none → 2015-04-27 08:00; baseline finish none → 2015-04-27 17:00 |
| 49 | **软件测试评审** |  | 2015-05-05 17:00 → 2015-05-06 23:30 (+1d) | 5d → 2.37d |  |  | baseline start none → 2015-04-29 08:00; baseline finish none → 2015-05-06 23:30 |
| 50 | 上课 |  |  |  |  |  | baseline start none → 2015-04-29 08:00; baseline finish none → 2015-04-29 11:00 |
| 51 | 进行软件测试评审 |  |  |  |  |  | baseline start none → 2015-04-30 08:00; baseline finish none → 2015-04-30 17:00 |
| 52 | 制作评审报告 |  |  | 1d → 0.35d |  |  | baseline start none → 2015-05-05 08:00; baseline finish none → 2015-05-05 17:00 |
| 53 | **软件测试复评审** |  |  | 5d → 1.74d |  |  | baseline start none → 2015-05-06 08:00; baseline finish none → 2015-05-12 17:00 |
| 54 | 上课 |  |  | 1d → 0.35d |  |  | baseline start none → 2015-05-06 08:00; baseline finish none → 2015-05-06 17:00 |
| 55 | **软件产品更新与展示** |  |  | 5d → 1.74d |  |  | baseline start none → 2015-05-13 08:00; baseline finish none → 2015-05-19 17:00 |
| 56 | 上课 |  |  | 1d → 0.35d |  |  | baseline start none → 2015-05-13 08:00; baseline finish none → 2015-05-13 17:00 |
| 57 | 演示 |  |  | 5d → 1.74d |  |  | baseline start none → 2015-05-20 08:00; baseline finish none → 2015-05-26 17:00 |
| 58 | 综合实验分析 |  |  | 5d → 1.74d |  |  | baseline start none → 2015-05-27 08:00; baseline finish none → 2015-06-02 17:00 |
| 59 | 综合实验总结 |  |  | 5d → 1.74d |  |  | baseline start none → 2015-06-03 08:00; baseline finish none → 2015-06-09 17:00 |
| 60 | 软件进度计划与控制 | 2015-03-19 08:00 → 2015-06-19 08:00 (+92d) | 2015-07-01 17:00 → 2015-06-25 17:00 (-6d) | 75d → 1.74d |  |  | baseline start none → 2015-06-19 08:00; baseline finish none → 2015-06-25 17:00 |
| 61 | 工作量估计与统计分析 | 2015-03-19 08:00 → 2015-06-25 08:00 (+98d) |  | 75d → 1.74d |  |  | baseline start none → 2015-06-25 08:00; baseline finish none → 2015-07-01 17:00 |
| 62 | 配置管理 | 2015-03-19 08:00 → 2015-07-01 08:00 (+104d) | 2015-07-01 17:00 → 2015-07-07 17:00 (+6d) | 75d → 1.74d |  |  | baseline start none → 2015-07-01 08:00; baseline finish none → 2015-07-07 17:00 |

## Version 4 (saved 2015-04-27, file 项目进度计划1.2.1.mpp)

Note of the change: 7-提交本周的更新的mpp

Last finish stays 2015-07-07. Complete tasks 38 → 41.

Added:

| ID | Task | Duration | Start | Finish | Resources |
| --- | --- | --- | --- | --- | --- |
| 49 | 编写实验六、七、八方案 | 2h | 2015-04-28 00:00 | 2015-04-28 02:00 | 李涵; 王斐; 张晋卿; 张振 |
| 52 | 开会讨论测试需求规格的更改 | 2h | 2015-04-30 00:00 | 2015-04-30 02:00 | 李涵; 张晋卿; 王斐; 张振 |
| 53 | 实验方案网上评审 | 4h | 2015-05-02 00:00 | 2015-05-02 04:00 | 李涵; 王斐; 张晋卿; 张振 |

Changed:

| ID | Task | Start | Finish | Duration | Complete | Other |
| --- | --- | --- | --- | --- | --- | --- |
| 45 | **软件测试** |  | 2015-05-18 10:00 → 2015-04-29 23:30 (-19d) | 6d → 2.02d | 0% → 75% |  |
| 46 | 开会讨论测试任务 | 2015-04-23 08:00 → 2015-04-24 00:00 A (+1d) | 2015-04-23 10:00 → 2015-04-24 02:00 A (+1d) |  | 0% → 100% |  |
| 47 | 设计测试用例 | 2015-04-24 08:00 → 2015-04-26 00:00 A (+2d) | 2015-04-24 17:00 → 2015-04-26 02:00 A (+2d) | 8h → 2h | 0% → 100% |  |
| 48 | 编写测试需求规格说明书 | 2015-04-27 08:00 → 2015-04-26 00:00 A (-1d) | 2015-04-27 17:00 → 2015-04-26 02:00 A (-1d) | 8h → 2h | 0% → 100% | was named 编写测试文档 |
| 51 | 上课第8周课 |  |  |  |  | was named 上课 |
| 54 | 修订软件测试需求规格说明书 | 2015-04-30 08:00 → 2015-05-02 00:00 (+2d) | 2015-04-30 17:00 → 2015-05-02 03:00 (+2d) | 8h → 3h |  | was named 进行软件测试评审 |
| 55 | 进行软件测试规格说明书的网上评审 | 2015-05-05 08:00 → 2015-05-03 00:00 (-2d) | 2015-05-05 17:00 → 2015-05-03 04:00 (-2d) | 0.35d → 4h |  | was named 制作评审报告; resources 张晋卿; 王斐 → 张晋卿; 王斐; 李涵; 张振 |
| 57 | 上课 |  | 2015-05-06 17:00 → 2015-05-06 16:00 | 0.35d → 0.3d |  |  |
| 59 | 上课 |  | 2015-05-13 17:00 → 2015-05-13 16:00 | 0.35d → 0.3d |  |  |

## Version 5 (saved 2015-05-13, file 项目进度计划1.2.1.mpp)

Note of the change: 10-更改mpp计划以及追踪mpp

Last finish 2015-07-07 → 2015-07-01 (-6d). Complete tasks 41 → 52.

Added:

| ID | Task | Duration | Start | Finish | Predecessors | Resources |
| --- | --- | --- | --- | --- | --- | --- |
| 58 | 开会讨论测试需求规格说明书 | 2h | 2015-05-08 00:00 A | 2015-05-08 02:00 A | 57 | 李涵; 王斐; 张晋卿; 张振 |
| 59 | 整理github资料 | 4h | 2015-05-13 00:00 A | 2015-05-13 04:00 A |  | 王斐; 李涵 |
| 60 | 追踪mpp | 3h | 2015-05-13 00:00 A | 2015-05-13 03:00 A |  | 张晋卿; 张振 |
| 61 | **软件测试需求完善** | 56h | 2015-05-14 00:00 A | 2015-05-21 17:00 |  |  |
| 62 | 开会讨论这周任务 | 2h | 2015-05-14 00:00 A | 2015-05-14 02:00 A |  | 李涵; 王斐; 张晋卿; 张振 |
| 63 | 完善需求规格说明书 | 4h | 2015-05-14 00:00 A | 2015-05-14 04:00 A |  | 李涵; 王斐; 张晋卿; 张振 |
| 64 | github资料评审 | 24h | 2015-05-15 00:00 A | 2015-05-18 17:00 A |  | 李涵; 王斐; 张晋卿; 张振 |

Removed: 60 演示

Changed:

| ID | Task | Start | Finish | Duration | Complete | Predecessors | Other |
| --- | --- | --- | --- | --- | --- | --- | --- |
| 30 | **软件需求复评审** |  | 2015-04-14 17:00 → 2015-04-16 17:00 (+2d) | 1.74d → 56h |  |  |  |
| 37 | **进度计划实验** |  | 2015-04-22 23:30 → 2015-04-22 17:00 | 2.37d → 48h |  |  |  |
| 45 | **软件测试** |  | 2015-04-29 23:30 → 2015-05-01 17:00 (+2d) | 2.02d → 56h | 75% → 100% |  |  |
| 49 | 编写实验六、七、八方案 | 2015-04-28 00:00 A | 2015-04-28 02:00 A |  | 0% → 100% |  |  |
| 50 | **软件测试评审** |  | 2015-05-06 23:30 → 2015-05-07 17:00 (+1d) | 2.37d → 56h | 0% → 50% |  |  |
| 51 | 上课第8周课 | 2015-04-29 08:00 → 2015-04-29 00:00 A | 2015-04-29 11:00 → 2015-04-29 03:00 A |  | 0% → 100% |  |  |
| 52 | 开会讨论测试需求规格的更改 | 2015-04-30 00:00 → 2015-05-01 00:00 A (+1d) | 2015-04-30 02:00 → 2015-05-01 02:00 A (+1d) |  | 0% → 100% |  |  |
| 54 | 修订软件测试需求规格说明书 | 2015-05-02 00:00 A | 2015-05-02 03:00 A |  | 0% → 100% |  |  |
| 56 | **软件测试复评审** |  | 2015-05-12 17:00 → 2015-05-14 17:00 (+2d) | 1.74d → 56h | 0% → 100% |  |  |
| 57 | 上第9周课 | 2015-05-06 08:00 → 2015-05-06 00:00 A | 2015-05-06 16:00 → 2015-05-06 03:00 A | 0.3d → 3h | 0% → 100% |  | was named 上课 |
| 65 | **软件产品更新与展示** | 2015-05-13 08:00 → 2015-05-20 00:00 (+7d) | 2015-05-19 17:00 → 2015-05-27 17:00 (+8d) | 1.74d → 56h |  |  |  |
| 66 | 上11周课 | 2015-05-13 08:00 → 2015-05-20 00:00 (+7d) | 2015-05-13 16:00 → 2015-05-20 03:00 (+7d) | 0.3d → 3h |  |  | was named 上课 |
| 67 | 综合实验分析 |  | 2015-06-02 17:00 → 2015-05-27 12:00 (-6d) | 1.74d → 4h |  | 演示 → none |  |
| 68 | 综合实验总结 |  | 2015-06-09 17:00 → 2015-06-03 12:00 (-6d) | 1.74d → 4h |  |  |  |
| 69 | 软件进度计划与控制 |  | 2015-06-25 17:00 → 2015-06-19 12:00 (-6d) | 1.74d → 4h |  |  |  |
| 70 | 工作量估计与统计分析 |  | 2015-07-01 17:00 → 2015-06-25 11:00 (-6d) | 1.74d → 3h |  |  |  |
| 71 | 配置管理 |  | 2015-07-07 17:00 → 2015-07-01 11:00 (-6d) | 1.74d → 3h |  |  |  |

## Version 6 (saved 2015-05-19, file 项目进度计划1.2.1.mpp)

Note of the change: 10-追踪本周任务完成情况

Last finish stays 2015-07-01. Complete tasks 52 → 56.

Added:

| ID | Task | Duration | Start | Finish | Resources |
| --- | --- | --- | --- | --- | --- |
| 65 | **CompCert C用例测试** | 46.5h | 2015-05-17 00:00 | 2015-05-20 23:30 |  |
| 66 | 10周-测试会议 | 2h | 2015-05-18 00:00 A | 2015-05-18 02:00 A | 王斐; 李涵; 张晋卿; 张振 |
| 67 | 完善测试用例 | 4h | 2015-05-18 00:00 A | 2015-05-18 04:00 A | 李涵; 王斐; 张晋卿; 张振 |
| 68 | 测试CompCert C测试用例 | 8h | 2015-05-19 00:00 A | 2015-05-19 08:00 A | 李涵; 王斐; 张晋卿; 张振 |
| 69 | 测试报告编写 | 4h | 2015-05-19 00:00 A | 2015-05-19 04:00 A | 李涵; 王斐; 张晋卿; 张振 |

Changed:

| ID | Task | Finish | Duration | Other |
| --- | --- | --- | --- | --- |
| 63 | 完善测试需求规格说明书 |  |  | was named 完善需求规格说明书 |
| 64 | github资料评审 | 2015-05-18 17:00 A → 2015-05-17 12:00 A (-1d) | 24h → 20h |  |

## Version 7 (saved 2015-05-25, file 项目进度计划1.2.1.mpp)

Note of the change: 11-进度控制分析报告完善

Last finish 2015-07-01 → 2015-06-10 (-21d). Complete tasks 56 → 60.

Added:

| ID | Task | Duration | Start | Finish | Resources |
| --- | --- | --- | --- | --- | --- |
| 60 | 第10周课程 | 3h | 2015-05-13 00:00 | 2015-05-13 03:00 | 李涵; 王斐; 张晋卿; 张振 |
| 72 | 第11周会议 | 2h | 2015-05-22 00:00 A | 2015-05-22 02:00 A | 李涵; 王斐; 张晋卿; 张振 |
| 73 | 完善mpp | 2h | 2015-05-25 00:00 A | 2015-05-25 02:00 A | 张晋卿 |
| 74 | 完善实验6-8的输出文件 | 4h | 2015-05-25 00:00 A | 2015-05-25 04:00 A | 李涵; 王斐; 张晋卿; 张振 |
| 77 | 12周会议 | 2h | 2015-05-29 00:00 | 2015-05-29 02:00 | 李涵; 王斐; 张晋卿; 张振 |
| 78 | 完善所有文档 | 30.5h | 2015-05-30 00:00 | 2015-06-01 23:30 | 李涵; 王斐; 张晋卿; 张振 |
| 79 | 进行实验初步分析 | 4h | 2015-06-02 00:00 | 2015-06-02 04:00 | 李涵; 王斐; 张晋卿 |
| 80 | 上12周课程 | 3h | 2015-06-03 00:00 | 2015-06-03 03:00 | 李涵; 王斐; 张晋卿; 张振 |
| 82 | 第13周会议 | 2h | 2015-06-05 00:00 | 2015-06-05 02:00 | 李涵; 王斐; 张晋卿; 张振 |
| 83 | 上13周课程 | 3h | 2015-06-10 00:00 | 2015-06-10 03:00 |  |

Removed: 74 软件进度计划与控制; 75 工作量估计与统计分析; 76 配置管理

Changed:

| ID | Task | Start | Finish | Duration | Complete |
| --- | --- | --- | --- | --- | --- |
| 56 | **软件测试复评审** |  |  |  | 100% → 80% |
| 59 | 整理github资料 | 2015-05-13 00:00 A → 2015-05-12 00:00 A (-1d) | 2015-05-13 04:00 A → 2015-05-12 04:00 A (-1d) |  |  |
| 66 | **CompCert C用例测试** |  | 2015-05-20 23:30 → 2015-05-19 17:00 (-1d) | 46.5h → 32h |  |
| 71 | **软件产品更新与展示** |  |  |  | 0% → 100% |
| 75 | 上11周课 | 2015-05-20 00:00 → 2015-05-27 00:00 A (+7d) | 2015-05-20 03:00 → 2015-05-27 03:00 A (+7d) |  | 0% → 100% |
| 76 | **综合实验分析** | 2015-05-27 08:00 → 2015-05-28 00:00 (+1d) | 2015-05-27 12:00 → 2015-06-03 23:30 (+7d) | 4h → 54.5h |  |
| 81 | **综合实验总结** |  | 2015-06-03 12:00 → 2015-06-10 23:30 (+7d) | 4h → 54.5h |  |

## Version 8 (saved 2015-06-08, file 项目进度计划1.2.1.mpp)

Note of the change: 13-mpp更新

Last finish 2015-06-10 → 2015-06-11 (+1d). Complete tasks 60 → 71.

Added:

| ID | Task | Duration | Start | Finish | Resources |
| --- | --- | --- | --- | --- | --- |
| 83 | 提取相关数据 | 4h | 2015-06-05 00:00 A | 2015-06-05 04:00 A | 王斐; 李涵 |
| 84 | 问题整理与提取 | 3h | 2015-06-05 00:00 A | 2015-06-05 03:00 A | 张晋卿; 张振 |
| 85 | 编写数据分析报告 | 4h | 2015-06-08 00:00 A | 2015-06-08 04:00 A | 李涵; 王斐 |
| 86 | 编写实验方法总结报告 | 4h | 2015-06-08 00:00 A | 2015-06-08 04:00 A | 张晋卿; 张振 |
| 87 | 编写个人实验总结 | 2h | 2015-06-08 00:00 A | 2015-06-08 02:00 A | 王斐; 李涵; 张晋卿; 张振 |
| 89 | 实验材料修订 | 4h | 2015-06-10 00:00 | 2015-06-10 04:00 | 李涵; 王斐; 张晋卿; 张振 |

Changed:

| ID | Task | Start | Finish | Duration | Complete | Other |
| --- | --- | --- | --- | --- | --- | --- |
| 76 | **综合实验分析** |  | 2015-06-03 23:30 → 2015-06-04 17:00 (+1d) | 54.5h → 56h | 0% → 100% |  |
| 77 | 12周会议 | 2015-05-29 00:00 A | 2015-05-29 02:00 A |  | 0% → 100% |  |
| 78 | 完善所有文档 | 2015-05-30 00:00 A | 2015-06-01 23:30 → 2015-05-30 12:00 A (-2d) | 30.5h → 12h | 0% → 100% |  |
| 79 | 进行实验初步分析 | 2015-06-02 00:00 A | 2015-06-02 04:00 A |  | 0% → 100% |  |
| 80 | 上12周课程 | 2015-06-03 00:00 A | 2015-06-03 03:00 A |  | 0% → 100% |  |
| 81 | **综合实验总结** |  | 2015-06-10 23:30 → 2015-06-11 17:00 (+1d) | 54.5h → 56h | 0% → 100% |  |
| 82 | 第13周会议 | 2015-06-05 00:00 A | 2015-06-05 02:00 A |  | 0% → 100% |  |
| 88 | 上13周课程 | 2015-06-10 00:00 A | 2015-06-10 03:00 A |  | 0% → 100% | resources none → 李涵; 王斐; 张晋卿; 张振 |
